# Sample project

Schedule from MS Project, 2022-01-01 to 2022-05-17, costs in ₽, A marks actual dates.

## Calendars

- Standard: Mon-Fri 08:00-12:00, 13:00-17:00; Sat-Sun off. Exceptions (off unless hours are given): 2022-01-05 to 2022-01-06 (Day-off).

## Resources

| Resource | Rate |
| --- | --- |
| Customer | 55 |
| Contractor | 66 |
| Developer 1 | 77 |
| Developer 2 | 88 |
| Analyst 1 (diff. Calendar) | 99 |
| Analyst2 | 100 |

## Schedule

| ID | WBS | Task | Type | Duration | Start | Finish | Predecessors | Complete | Remaining | Total slack | Free slack | Resources | Work | Actual work | Cost | Actual cost |
| --- | --- | --- | --- | --- | --- | --- | --- | --- | --- | --- | --- | --- | --- | --- | --- | --- |
| 1 | 1 | Project's start | milestone | 0d | 2022-01-01 | 2022-01-01 |  |  |  | 95d |  |  |  |  |  |  |
| 3 | 2 | **Software system development project** |  | 94.75d? | 2022-01-03 A | 2022-05-17 |  | 2% | 93.19d? | 0d |  |  | 1920h | 36h | 155,344 | 2,178 |
| 4 | 2.1 | **Initiating** |  | 5.75d | 2022-01-03 A | 2022-01-12 |  | 38% | 3.59d | 0d |  |  | 96h | 36h | 5,808 | 2,178 |
| 5 | 2.1.1 | Kick-off meeting |  | 1d | 2022-01-03 A | 2022-01-03 A | 1 | 100% |  |  |  | Customer; Contractor | 16h | 16h | 968 | 968 |
| 6 | 2.1.2 | Contract's negotiations |  | 5d | 2022-01-04 A | 2022-01-12 | 5 | 25% | 3.75d | 0d |  | Customer; Contractor | 80h | 20h | 4,840 | 1,210 |
| 7 | 2.1.3 | Contract signed | milestone | 0d | 2022-01-12 | 2022-01-12 | 6 |  |  | 0d |  |  |  |  |  |  |
| 9 | 2.2 | **Planning and analysis** |  | 27d | 2022-01-12 | 2022-02-18 |  |  |  | 0d |  |  | 256h |  | 16,896 |  |
| 10 | 2.2.1 | Business-processes' examination |  | 10d | 2022-01-12 | 2022-01-26 | 7 |  |  | 0d |  | Contractor | 80h |  | 5,280 |  |
| 11 | 2.2.2 | Creating a report |  | 5d | 2022-01-26 | 2022-02-02 | 10 |  |  | 0d |  | Contractor | 40h |  | 2,640 |  |
| 12 | 2.2.3 | Report Delivery |  | 5d | 2022-02-02 | 2022-02-09 | 11 |  |  | 0d |  | Contractor | 40h |  | 2,640 |  |
| 13 | 2.2.4 | Detailed shedule delivery |  | 5d | 2022-02-09 | 2022-02-16 | 12 |  |  | 2d |  | Contractor | 40h |  | 2,640 |  |
| 14 | 2.2.5 | Project charter delivery |  | 7d | 2022-02-09 | 2022-02-18 | 12 |  |  | 0d |  | Contractor | 56h |  | 3,696 |  |
| 15 | 2.2.6 | Planning and analysis phase completed | milestone | 0d | 2022-02-18 | 2022-02-18 | 11, 12, 13, 14 |  |  | 0d |  |  |  |  |  |  |
| 17 | 2.3 | **Development** |  | 24d? | 2022-02-18 | 2022-03-24 |  |  |  | 0d |  |  | 424h |  | 33,528 |  |
| 18 | 2.3.1 | Infrastructure preparation |  | 7d | 2022-02-18 | 2022-03-01 | 15 |  |  | 16d | 0d | Customer | 56h |  | 3,080 |  |
| 19 | 2.3.2 | Infrastructure ready |  | 1d? | 2022-03-01 | 2022-03-02 | 18 |  |  | 16d |  |  |  |  |  |  |
| 20 | 2.3.3 | **Coding and initial testing** |  | 24d | 2022-02-18 | 2022-03-24 |  |  |  | 0d |  |  | 368h |  | 30,448 |  |
| 21 | 2.3.3.1 | **Subsystem 1** |  | 22d | 2022-02-18 | 2022-03-22 |  |  |  | 2d |  |  | 176h |  | 13,552 |  |
| 22 | 2.3.3.1.1 | **Module 1** |  | 13d | 2022-02-18 | 2022-03-09 |  |  |  | 2d |  |  | 104h |  | 8,008 |  |
| 23 | 2.3.3.1.1.1 | Coding |  | 10d | 2022-02-18 | 2022-03-04 | 15 |  |  | 2d | 0d | Developer 1 | 80h |  | 6,160 |  |
| 24 | 2.3.3.1.1.2 | Testing |  | 3d | 2022-03-04 | 2022-03-09 | 23 |  |  | 2d | 0d | Developer 1 | 24h |  | 1,848 |  |
| 25 | 2.3.3.1.2 | **Module 2** |  | 9d | 2022-03-09 | 2022-03-22 |  |  |  | 2d |  |  | 72h |  | 5,544 |  |
| 26 | 2.3.3.1.2.1 | Coding |  | 7d | 2022-03-09 | 2022-03-18 | 24 |  |  | 2d | 0d | Developer 1 | 56h |  | 4,312 |  |
| 27 | 2.3.3.1.2.2 | Testing |  | 2d | 2022-03-18 | 2022-03-22 | 26 |  |  | 2d |  | Developer 1 | 16h |  | 1,232 |  |

| ID | WBS | Task | Type | Duration | Start | Finish | Predecessors | Total slack | Resources | Work | Cost |
| --- | --- | --- | --- | --- | --- | --- | --- | --- | --- | --- | --- |
| 28 | 2.3.3.2 | **Subsystem 2** |  | 24d | 2022-02-18 | 2022-03-24 |  | 0d |  | 192h | 16,896 |
| 29 | 2.3.3.2.1 | **Module 3** |  | 9d | 2022-02-18 | 2022-03-03 |  | 0d |  | 72h | 6,336 |
| 30 | 2.3.3.2.1.1 | Coding |  | 8d | 2022-02-18 | 2022-03-02 | 15 | 0d | Developer 2 | 64h | 5,632 |
| 31 | 2.3.3.2.1.2 | Testing |  | 1d | 2022-03-02 | 2022-03-03 | 30 | 0d | Developer 2 | 8h | 704 |
| 32 | 2.3.3.2.2 | **Module 4** |  | 15d | 2022-03-03 | 2022-03-24 |  | 0d |  | 120h | 10,560 |
| 33 | 2.3.3.2.2.1 | Coding |  | 12d | 2022-03-03 | 2022-03-21 | 31 | 0d | Developer 2 | 96h | 8,448 |
| 34 | 2.3.3.2.2.2 | Testing |  | 3d | 2022-03-21 | 2022-03-24 | 33 | 0d | Developer 2 | 24h | 2,112 |
| 35 | 2.3.4 | All coding done and ready for acceptance testing | milestone | 0d | 2022-03-24 | 2022-03-24 | 19, 20 | 0d |  |  |  |
| 37 | 2.4 | **Acceptance testing** |  | 30d | 2022-03-24 | 2022-05-05 |  | 0d |  | 1056h | 93,568 |
| 38 | 2.4.1 | Modules' testing |  | 5d | 2022-03-24 | 2022-03-31 | 35 | 0d | Analyst 1 (diff. Calendar); Developer 1; Developer 2 | 120h | 10,560 |
| 39 | 2.4.2 | Perfomance testing |  | 5d | 2022-03-24 | 2022-03-31 | 35 | 0d | Analyst2; Developer 2 | 80h | 7,520 |
| 40 | 2.4.3 | Integration testing |  | 7d | 2022-03-31 | 2022-04-11 | 38, 39 | 0d | Analyst 1 (diff. Calendar) | 56h | 5,544 |
| 41 | 2.4.4 | Error correction |  | 5d | 2022-04-11 | 2022-04-18 | 40 | 0d | Analyst 1 (diff. Calendar); Analyst2; Developer 1; Developer 2 | 160h | 14,560 |
| 42 | 2.4.5 | New requirments' implementation |  | 7d | 2022-04-18 | 2022-04-27 | 41 | 0d | Analyst 1 (diff. Calendar); Analyst2; Developer 1; Developer 2 | 224h | 20,384 |
| 43 | 2.4.6 | **Testing - second iteration** |  | 6d | 2022-04-27 | 2022-05-05 |  | 0d | Analyst 1 (diff. Calendar); Analyst2; Contractor; Customer; Developer 1; Developer 2 | 416h | 35,000 |
| 44 | 2.4.6.1 | Modules' testing |  | 3d | 2022-04-27 | 2022-05-02 | 38, 39, 40, 41, 42 | 0d | Analyst 1 (diff. Calendar); Developer 1; Developer 2 | 72h | 6,336 |
| 45 | 2.4.6.2 | Perfomance testing |  | 2d | 2022-04-27 | 2022-04-29 | 38, 39, 40, 41, 42 | 1d | Analyst2; Developer 2 | 32h | 3,008 |
| 46 | 2.4.6.3 | Integration testing |  | 3d | 2022-05-02 | 2022-05-05 | 44, 45 | 0d | Analyst 1 (diff. Calendar) | 24h | 2,376 |
| 47 | 2.4.7 | System accepted successfully | milestone | 0d | 2022-05-05 | 2022-05-05 | 42, 43 | 0d |  |  |  |
| 49 | 2.5 | **Work closing** |  | 8d | 2022-05-05 | 2022-05-17 |  | 0d |  | 88h | 5,544 |
| 50 | 2.5.1 | Certificate of completion's signment |  | 3d | 2022-05-05 | 2022-05-10 | 47 | 0d | Customer; Contractor | 48h | 2,904 |
| 51 | 2.5.2 | Billing and paymemts |  | 5d | 2022-05-10 | 2022-05-17 | 50 | 0d | Contractor | 40h | 2,640 |
| 52 | 2.5.3 | Work accomplised | milestone | 0d | 2022-05-10 | 2022-05-10 | 50 | 5d |  |  |  |
| 53 | 2.5.4 | Contract closed | milestone | 0d | 2022-05-10 | 2022-05-10 | 50 | 5d |  |  |  |
